# Maxims POS Polling ESB Implementation (Dev) 20170208.xml

Schedule from MS Project XML, 2017-02-06 to 2017-03-20, A marks actual dates.

## Calendars

- Standard: Mon-Fri 08:00-12:00, 13:00-17:00; Sat-Sun off.

## Resources

| Resource |
| --- |
| Lotic |
| Steven |
| Edward |
| Johnson |
| Joy |
| Gavin |
| Parko |

## Schedule

| ID | WBS | Task | Type | Duration | Start | Finish | Predecessors | Complete | Remaining | Total slack | Free slack | Constraint | Resources | Work | Actual work |
| --- | --- | --- | --- | --- | --- | --- | --- | --- | --- | --- | --- | --- | --- | --- | --- |
| 1 | 1 | **Maxim's ESB Development** |  | 31d | 2017-02-06 A | 2017-03-20 |  | 1% | 30.58d | 0d |  |  |  | 806.4h | 10.23h |
| 2 | 1.1 | Data Model Definition |  | 1d | 2017-02-06 A | 2017-02-06 A |  | 100% |  |  |  |  | Steven | 8h | 8h |
| 3 | 1.2 | Work Flow Pseudo Coding |  | 2d | 2017-02-07 A | 2017-02-08 |  | 10% | 1.8d | 28d |  | finish no earlier than 2017-02-08 | Steven; Parko | 30.4h | 1.6h |
| 4 | 1.3 | Story Telling on Overall Project Background |  | 1d | 2017-02-10 | 2017-02-10 | 2 |  |  | 26d |  | start no earlier than 2017-02-10 | Steven; Edward; Gavin; Johnson; Joy; Lotic | 48h |  |
| 5 | 1.4 | **Common Model** |  | 7d | 2017-02-09 | 2017-02-17 |  |  |  | 2d |  |  |  | 96h |  |
| 6 | 1.4.1 | FTP Server (for FTP based file download) |  | 1d | 2017-02-09 | 2017-02-09 |  |  |  | 11d | 0d | start no earlier than 2017-02-09 | Lotic | 8h |  |
| 7 | 1.4.2 | File Copy Service (Network Drive File Copy) |  | 1d | 2017-02-10 | 2017-02-10 | 6 |  |  | 11d | 0d |  | Lotic | 8h |  |
| 8 | 1.4.3 | Job Control Services |  | 2d | 2017-02-13 | 2017-02-14 |  |  |  | 0d |  | start no earlier than 2017-02-13 | Gavin | 16h |  |
| 9 | 1.4.4 | JDBC Utility |  | 5d | 2017-02-13 | 2017-02-17 |  |  |  | 21d |  | start no earlier than 2017-02-13 | Steven | 40h |  |
| 10 | 1.4.5 | Export DBF / CSV / Text |  | 3d | 2017-02-13 | 2017-02-15 |  |  |  | 0.08d | 0d | start no earlier than 2017-02-13 | Joy | 24h |  |
| 11 | 1.5 | **ESB Core Data Polling** |  | 11d | 2017-02-13 | 2017-02-27 |  |  |  | 2d |  |  |  | 224h |  |
| 12 | 1.5.1 | POS to Staging - Real Time |  | 5d | 2017-02-13 | 2017-02-17 | 7 |  |  | 11d | 0d |  | Lotic | 40h |  |
| 13 | 1.5.2 | POS to Staging - End of Day |  | 3d | 2017-02-20 | 2017-02-22 | 12 |  |  | 11d | 0d |  | Lotic | 24h |  |
| 14 | 1.5.3 | Staging to EDW - Real Time |  | 5d | 2017-02-15 | 2017-02-21 | 8 |  |  | 0d |  | start no earlier than 2017-02-13 | Gavin | 40h |  |
| 15 | 1.5.4 | Staging to EDW - End of Day |  | 4d | 2017-02-22 | 2017-02-27 | 14 |  |  | 0d |  |  | Gavin | 32h |  |
| 16 | 1.5.5 | Master/Pricing Data (Staging to POS) |  | 5d | 2017-02-13 | 2017-02-17 |  |  |  | 3d | 0d | start no earlier than 2017-02-13 | Johnson | 40h |  |
| 17 | 1.5.6 | Data Adaptor Monitor |  | 3d | 2017-02-16 | 2017-02-20 | 10 |  |  | 0.08d | 0d |  | Joy | 24h |  |
| 18 | 1.5.7 | Copy Data from (IT12 or IT50) to Staging |  | 3d | 2017-02-20 | 2017-02-22 | 16 |  |  | 3d | 0d |  | Johnson | 24h |  |
| 19 | 1.6 | **Systems Configuration User Interface / Others** |  | 20d | 2017-02-21 A | 2017-03-20 |  |  | 19.97d | 0d |  |  |  | 400h | 0.63h |
| 20 | 1.6.1 | User Maintenance (Completed) | milestone | 0d | 2017-02-21 A | 2017-02-21 A | 17 | 100% |  |  |  | finish no earlier than 2017-02-06 |  |  |  |
| 21 | 1.6.2 | System Parameter Configuration |  | 4d | 2017-02-21 A | 2017-02-24 | 17 | 2% | 3.92d | 7d | 0d |  | Joy | 32h | 0.63h |
| 22 | 1.6.3 | Branch Info Maintenance |  | 3d | 2017-02-28 | 2017-03-02 | 15 |  |  | 0d |  |  | Gavin | 24h |  |
| 23 | 1.6.4 | Branch Scheme Maintenance |  | 15d | 2017-02-23 | 2017-03-15 | 18 |  |  | 3d |  |  | Johnson | 120h |  |
| 24 | 1.6.5 | Scheduler Jobs Maintenance |  | 5d | 2017-02-27 | 2017-03-03 | 21 |  |  | 7d | 0d |  | Joy | 40h |  |
| 25 | 1.6.6 | Alert Email |  | 4d | 2017-03-06 | 2017-03-09 | 24 |  |  | 7d |  |  | Joy | 32h |  |
| 26 | 1.6.7 | Export Daily Report |  | 4d | 2017-02-23 | 2017-02-28 | 13 |  |  | 11d | 0d |  | Lotic | 32h |  |
| 27 | 1.6.8 | Job Logs View |  | 6d | 2017-03-03 | 2017-03-10 | 22 |  |  | 0d |  |  | Gavin | 48h |  |
| 28 | 1.6.9 | Systems Dashboard |  | 3d | 2017-03-01 | 2017-03-03 | 26 |  |  | 11d |  |  | Lotic | 24h |  |
| 29 | 1.6.10 | Backup and Housekeeping |  | 6d | 2017-03-13 | 2017-03-20 | 27 |  |  | 0d |  |  | Gavin | 48h |  |

Notes:
- 4: Present all requirements to all developers, develop write back logic and technical spec
- 14: STG -> Web Services API -> EDW
